# 人力平台改造立项与实施计划初步估计

Schedule from a web Gantt chart, 2024-08-19 to 2025-02-07.
Saturdays and Sundays are off

## Schedule

| ID | WBS | Task | Duration | Start | Finish | Predecessors | Status |
| --- | --- | --- | --- | --- | --- | --- | --- |
| 2 | 1 | 供应商需求评估 | 3d | 2024-08-19 | 2024-08-21 |  |  |
| 3 | 2 | 对改造费用评估结果进行沟通、压降 | 2d | 2024-08-22 | 2024-08-23 | 2 | waiting |
| 4 | 3 | 人力提交itsm流程，固定需求 | 2d | 2024-08-26 | 2024-08-27 | 3 | waiting |
| 5 | 4 | 调整现有立项报告，沟通、确认 | 3d | 2024-08-26 | 2024-08-28 | 3 | waiting |
| 6 | 5 | 提交立项预审 | 3d | 2024-08-29 | 2024-09-02 | 5 | waiting |
| 7 | 6 | 提交立项流程 | 41d | 2024-09-03 | 2024-10-29 | 6 | waiting |
| 8 | 7 | 发起采购议题 | 4d | 2024-10-30 | 2024-11-04 | 7 | waiting |
| 9 | 8 | 采购文件用印 | 3d | 2024-11-05 | 2024-11-07 | 8 | waiting |
| 10 | 9 | 采购会议排期及采购谈判 | 10d | 2024-11-08 | 2024-11-21 | 9 | waiting |
| 11 | 10 | 采购会议纪要 | 2d | 2024-11-22 | 2024-11-25 | 10 | waiting |
| 12 | 11 | 合同拟定、预审、合同签订 | 10d | 2024-11-26 | 2024-12-09 | 11 | waiting |
| 13 | 12 | 供应商开发 | 20d | 2024-11-22 | 2024-12-19 | 10 | waiting |
| 14 | 13 | 供应商自测、修改、完善 | 20d | 2024-12-20 | 2025-01-16 | 13 | waiting |
| 15 | 14 | 人力部UAT、供应商完善 | 10d | 2025-01-17 | 2025-01-30 | 14 | waiting |
| 16 | 15 | 上线材料准备 | 3d | 2025-01-31 | 2025-02-04 | 15 | waiting |
| 17 | 16 | 上线流程发起、上线部署 | 3d | 2025-02-05 | 2025-02-07 | 16 | waiting |
